# LOG650 - G22 Prosjektplan

Schedule from MS Project, 2026-02-24 to 2026-05-29, A marks actual dates.

## Calendars

- Standard: Mon-Fri 08:00-12:00, 13:00-17:00; Sat-Sun off.

## Resources

| Resource |
| --- |
| Sebastian Vambheim Thunestvedt |
| Frida Berge-Robertson |
| Oliver Matre Hille |

## Schedule

| ID | WBS | Task | Type | Duration | Start | Finish | Predecessors | Complete | Baseline start | Baseline finish | Baseline duration | Total slack | Free slack | Resources | Work | Actual work |
| --- | --- | --- | --- | --- | --- | --- | --- | --- | --- | --- | --- | --- | --- | --- | --- | --- |
| 1 | 1 | **FASE 2 — PLANLEGGING** |  | 11d | 2026-02-24 A | 2026-03-11 A |  | 100% | 2026-02-24 | 2026-03-11 | 11d |  |  |  | 279.2h | 279.2h |
| 2 | 1.1 | Prosjektplan | manual | 10d | 2026-02-24 A | 2026-03-09 A |  | 100% | 2026-02-24 | 2026-03-09 | 10d |  |  | Sebastian Vambheim Thunestvedt [33%]; Frida Berge-Robertson [33%]; Oliver Matre Hille [33%] | 79.2h | 79.2h |
| 3 | 1.2 | WBS og Gantt-diagram (MS Project) | manual | 5d | 2026-03-03 A | 2026-03-09 A | 2SS+5d | 100% | 2026-03-03 | 2026-03-09 | 5d |  |  | Sebastian Vambheim Thunestvedt | 40h | 40h |
| 4 | 1.3 | Risikoanalyse | manual | 5d | 2026-03-03 A | 2026-03-09 A | 2SS+5d | 100% | 2026-03-03 | 2026-03-09 | 5d |  |  | Frida Berge-Robertson | 40h | 40h |
| 5 | 1.4 | Litteratursøk — identifisere nøkkelreferanser | manual | 10d | 2026-02-24 A | 2026-03-09 A |  | 100% | 2026-02-24 | 2026-03-09 | 10d |  |  | Frida Berge-Robertson [50%]; Oliver Matre Hille [50%] | 80h | 80h |
| 6 | 1.5 | Rapportskjelett i Word-mal | manual | 5d | 2026-03-03 A | 2026-03-09 A | 2SS+5d | 100% | 2026-03-03 | 2026-03-09 | 5d |  |  | Sebastian Vambheim Thunestvedt | 40h | 40h |
| 7 | 1.6 | M1: Godkjent prosjektplan + Gantt | milestone | 0d | 2026-03-11 A | 2026-03-11 A | 2, 3, 4, 5, 6 | 100% | 2026-03-11 | 2026-03-11 | 0d |  |  |  |  |  |
| 8 | 2 | **FASE 3 — GJENNOMFØRING** |  | 41d | 2026-03-11 | 2026-05-06 |  |  | 2026-03-11 | 2026-05-06 | 41d | 0d |  |  | 1155.03h |  |
| 9 | 2.1 | Innledning + problemstilling (1. utkast) |  | 10d | 2026-03-11 | 2026-03-24 | 7 |  | 2026-03-11 | 2026-03-24 | 10d | 48d |  | Frida Berge-Robertson | 72.73h |  |
| 10 | 2.2 | Lese utvalgte referanser + KI-oppsummering |  | 15d | 2026-03-11 | 2026-03-31 | 7 |  | 2026-03-11 | 2026-03-31 | 15d | 33d | 0d | Frida Berge-Robertson [50%]; Oliver Matre Hille [50%] | 180h |  |
| 11 | 2.3 | Skrive teorikapittel |  | 10d | 2026-04-01 | 2026-04-14 | 10 |  | 2026-04-01 | 2026-04-14 | 10d | 33d |  | Frida Berge-Robertson | 72.73h |  |
| 12 | 2.4 | Avklare datatilgang Coop Extra X |  | 10d | 2026-03-11 | 2026-03-24 | 7 |  | 2026-03-11 | 2026-03-24 | 10d | 0d |  | Oliver Matre Hille | 72.73h |  |
| 13 | 2.5 | Signere taushetserklæring |  | 5d | 2026-03-11 | 2026-03-17 | 7 |  | 2026-03-11 | 2026-03-17 | 5d | 53d |  | Oliver Matre Hille | 33.33h |  |
| 14 | 2.6 | Innhente salgsdata + hylleplassdata |  | 10d | 2026-03-25 | 2026-04-07 | 12 |  | 2026-03-25 | 2026-04-07 | 10d | 0d |  | Oliver Matre Hille | 72.73h |  |
| 15 | 2.7 | Datarensing og strukturering (pandas) |  | 10d | 2026-04-01 | 2026-04-14 | 14SS+5d |  | 2026-04-01 | 2026-04-14 | 10d | 0d |  | Sebastian Vambheim Thunestvedt | 72.73h |  |
| 16 | 2.8 | Skrive casebeskrivelse |  | 5d | 2026-04-08 | 2026-04-14 | 14 |  | 2026-04-08 | 2026-04-14 | 5d | 33d |  | Oliver Matre Hille | 33.33h |  |
| 17 | 2.9 | Beskrive metodevalg |  | 5d | 2026-03-11 | 2026-03-17 | 7 |  | 2026-03-11 | 2026-03-17 | 5d | 53d |  | Sebastian Vambheim Thunestvedt | 33.33h |  |
| 18 | 2.10 | Etterspørselsanalyse (deskriptiv + ABC) |  | 5d | 2026-04-15 | 2026-04-21 | 15 |  | 2026-04-15 | 2026-04-21 | 5d | 28d |  | Sebastian Vambheim Thunestvedt | 33.33h |  |
| 19 | 2.11 | Formulere optimaliseringsmodell (LP) |  | 5d | 2026-04-15 | 2026-04-21 | 15 |  | 2026-04-15 | 2026-04-21 | 5d | 0d |  | Sebastian Vambheim Thunestvedt [50%]; Frida Berge-Robertson [50%] | 66.67h |  |
| 20 | 2.12 | Implementere modell i Python (PuLP) |  | 10d | 2026-04-15 | 2026-04-28 | 19SS |  | 2026-04-15 | 2026-04-28 | 10d | 0d |  | Sebastian Vambheim Thunestvedt | 72.73h |  |
| 21 | 2.13 | Kjøre modell og generere resultater |  | 5d | 2026-04-22 | 2026-04-28 | 20SS+5d |  | 2026-04-22 | 2026-04-28 | 5d | 0d |  | Sebastian Vambheim Thunestvedt | 33.33h |  |
| 22 | 2.14 | Skrive metode-/modelleringskapittel |  | 5d | 2026-04-22 | 2026-04-28 | 19 |  | 2026-04-22 | 2026-04-28 | 5d | 23d |  | Frida Berge-Robertson | 33.33h |  |
| 23 | 2.15 | Presentere resultater (tabeller/figurer) |  | 5d | 2026-04-22 | 2026-04-28 | 21SS |  | 2026-04-22 | 2026-04-28 | 5d | 0d |  | Sebastian Vambheim Thunestvedt | 33.33h |  |
| 24 | 2.16 | Sensitivitetsanalyse |  | 5d | 2026-04-22 | 2026-04-28 | 21SS |  | 2026-04-22 | 2026-04-28 | 5d | 23d |  | Sebastian Vambheim Thunestvedt | 33.33h |  |
| 25 | 2.17 | Skrive resultatkapittel |  | 5d | 2026-04-22 | 2026-04-28 | 23SS |  | 2026-04-22 | 2026-04-28 | 5d | 0d |  | Frida Berge-Robertson | 33.33h |  |
| 26 | 2.18 | Skrive diskusjonskapittel |  | 5d | 2026-04-29 | 2026-05-05 | 25 |  | 2026-04-29 | 2026-05-05 | 5d | 0d |  | Sebastian Vambheim Thunestvedt [33%]; Frida Berge-Robertson [33%]; Oliver Matre Hille [33%] | 100h |  |
| 27 | 2.19 | Samle hovedutkast |  | 3d | 2026-04-29 | 2026-05-01 | 26SS |  | 2026-04-29 | 2026-05-01 | 3d | 0d |  | Sebastian Vambheim Thunestvedt | 18h |  |
| 28 | 2.20 | Peer-to-peer review |  | 3d | 2026-05-04 | 2026-05-06 | 27 |  | 2026-05-04 | 2026-05-06 | 3d | 17d |  | Sebastian Vambheim Thunestvedt [33%]; Frida Berge-Robertson [33%]; Oliver Matre Hille [33%] | 54h |  |
| 29 | 2.21 | M2: Godkjent hovedutkast + peer review | milestone | 0d | 2026-05-01 | 2026-05-01 | 27 |  | 2026-05-01 | 2026-05-01 | 0d | 0d |  |  |  |  |

| ID | WBS | Task | Type | Duration | Start | Finish | Predecessors | Baseline start | Baseline finish | Baseline duration | Total slack | Resources | Work |
| --- | --- | --- | --- | --- | --- | --- | --- | --- | --- | --- | --- | --- | --- |
| 30 | 3 | **FASE 4 — AVSLUTNING** |  | 20d | 2026-05-04 | 2026-05-29 |  | 2026-05-04 | 2026-05-29 | 20d | 0d |  | 703.03h |
| 31 | 3.1 | Skrive konklusjon |  | 5d | 2026-05-04 | 2026-05-08 | 29 | 2026-05-04 | 2026-05-08 | 5d | 0d | Sebastian Vambheim Thunestvedt [33%]; Frida Berge-Robertson [33%]; Oliver Matre Hille [33%] | 100h |
| 32 | 3.2 | Ferdigstille innledning |  | 5d | 2026-05-04 | 2026-05-08 | 29 | 2026-05-04 | 2026-05-08 | 5d | 0d | Frida Berge-Robertson | 33.33h |
| 33 | 3.3 | Kvalitetssikring, korrektur, referanser |  | 10d | 2026-05-11 | 2026-05-22 | 31, 32 | 2026-05-11 | 2026-05-22 | 10d | 0d | Sebastian Vambheim Thunestvedt [33%]; Frida Berge-Robertson [33%]; Oliver Matre Hille [33%] | 218.18h |
| 34 | 3.4 | Ferdigstille Python-kode + dokumentasjon |  | 5d | 2026-05-04 | 2026-05-08 | 29 | 2026-05-04 | 2026-05-08 | 5d | 15d | Sebastian Vambheim Thunestvedt | 33.33h |
| 35 | 3.5 | Forberede muntlig presentasjon |  | 10d | 2026-05-11 | 2026-05-22 | 33SS | 2026-05-11 | 2026-05-22 | 10d | 0d | Sebastian Vambheim Thunestvedt [33%]; Frida Berge-Robertson [33%]; Oliver Matre Hille [33%] | 218.18h |
| 36 | 3.6 | Muntlig eksamen |  | 5d | 2026-05-25 | 2026-05-29 | 35 | 2026-05-25 | 2026-05-29 | 5d | 0d | Sebastian Vambheim Thunestvedt [33%]; Frida Berge-Robertson [33%]; Oliver Matre Hille [33%] | 100h |
| 37 | 3.7 | M3: Rapport + kode innlevert, presentasjon | milestone | 0d | 2026-05-29 | 2026-05-29 | 33, 34, 35, 36 | 2026-05-29 | 2026-05-29 | 0d | 0d |  |  |
